# Vezba

Schedule from MS Project, 2016-03-07 to 2016-07-08, costs in $.

## Calendars

- Standard: Mon-Fri 08:00-12:00, 13:00-17:00; Sat-Sun off.

## Resources

| Resource | Rate |
| --- | --- |
| Костић Сандра | 45 |
| Шипка Татјана | 45 |
| Фабијан Роберт | 62.5 |
| Ференц Енике | 45 |
| Раданов Јелена – Дизајнер | 60 |
| Глишов Жељко – Уредник | 30 |
| Презентациони материјал |  |
| Кетеринг |  |
| Софтвер |  |
| Опрема |  |

## Schedule

| ID | WBS | Task | Type | Duration | Start | Finish | Predecessors | Total slack | Resources | Work | Cost |
| --- | --- | --- | --- | --- | --- | --- | --- | --- | --- | --- | --- |
| 1 | 1 | Почетак пројекта | milestone | 0d | 2016-03-07 | 2016-03-07 |  | 0d |  |  |  |
| 2 | 2 | **Структура сајта** |  | 11d | 2016-03-07 | 2016-03-21 | 1SS | 0d |  | 372h | 16,950 |
| 3 | 2.1 | Договор о категоријама садржаја |  | 3d | 2016-03-07 | 2016-03-09 |  | 0d | Костић Сандра; Глишов Жељко – Уредник; Шипка Татјана; Фабијан Роберт; Ференц Енике [50%] | 108h | 4,920 |
| 4 | 2.2 | Састанци са корисницима |  | 5d | 2016-03-10 | 2016-03-16 | 3 | 0d | Раданов Јелена – Дизајнер; Глишов Жељко – Уредник; Презентациони материјал [0.1%]; Кетеринг [0.1%]; Шипка Татјана | 120h | 5,550 |
| 5 | 2.3 | Развој структуре сајта |  | 3d | 2016-03-10 | 2016-03-14 | 4SS | 0d | Костић Сандра | 24h | 1,080 |
| 6 | 2.4 | Ревизија структуре сајта |  | 5d | 2016-03-15 | 2016-03-21 | 5 | 0d | Костић Сандра; Раданов Јелена – Дизајнер; Глишов Жељко – Уредник | 120h | 5,400 |
| 7 | 2.5 | Структура сајта завршена | milestone | 0d | 2016-03-21 | 2016-03-21 | 6 | 0d |  |  |  |
| 8 | 3 | **Дизајн сајта** |  | 25d | 2016-03-22 | 2016-04-25 | 2 | 0d |  | 404h | 20,060 |
| 9 | 3.1 | **Унутрашње странице** |  | 16d | 2016-03-22 | 2016-04-12 |  | 0d |  | 256h | 13,520 |
| 10 | 3.1.1 | Дизајн унутрашњих страница |  | 7d | 2016-03-22 | 2016-03-30 |  | 0d | Фабијан Роберт; Раданов Јелена – Дизајнер | 112h | 6,860 |
| 11 | 3.1.2 | Развој шаблона |  | 5d | 2016-03-31 | 2016-04-06 | 10 | 0d | Фабијан Роберт; Глишов Жељко – Уредник | 80h | 3,700 |
| 12 | 3.1.3 | Ревизија |  | 4d | 2016-04-07 | 2016-04-12 | 11 | 0d | Фабијан Роберт; Глишов Жељко – Уредник | 64h | 2,960 |
| 13 | 3.1.4 | Завршен дизајн унутрашњих страница | milestone | 0d | 2016-04-12 | 2016-04-12 | 12 | 0d |  |  |  |
| 14 | 3.2 | **Полазна страна** |  | 9d | 2016-04-13 | 2016-04-25 | 9 | 0d |  | 148h | 6,540 |
| 15 | 3.2.1 | Дизајн полазне стране |  | 4d | 2016-04-13 | 2016-04-18 |  | 0d | Ференц Енике [50%]; Раданов Јелена – Дизајнер | 48h | 2,640 |
| 16 | 3.2.2 | Ревизија дизајна полазне стране |  | 5d | 2016-04-19 | 2016-04-25 | 15 | 0d | Костић Сандра; Ференц Енике [50%]; Глишов Жељко – Уредник | 100h | 3,900 |
| 17 | 3.2.3 | Дизајн полазне стране завршен | milestone | 0d | 2016-04-25 | 2016-04-25 | 16 | 0d |  |  |  |
| 18 | 4 | **Хардвер и софтвер** |  | 54d | 2016-04-26 | 2016-07-08 | 8 | 0d |  | 496h | 43,360 |
| 19 | 4.1 | Анализа системских потреба |  | 10d | 2016-04-26 | 2016-05-09 |  | 0d | Костић Сандра | 80h | 3,600 |
| 20 | 4.2 | Процена захтева за опремом |  | 13d | 2016-05-10 | 2016-05-26 | 19 | 0d | Костић Сандра | 104h | 4,680 |
| 21 | 4.3 | Процена софтверских захтева |  | 15d | 2016-05-27 | 2016-06-16 | 20 | 0d | Костић Сандра | 120h | 5,400 |
| 22 | 4.4 | Поручивање опреме |  | 3d | 2016-06-17 | 2016-06-21 | 21 | 0d | Шипка Татјана; Глишов Жељко – Уредник; Опрема [0.1%] | 48h | 11,800 |
| 23 | 4.5 | Поручивање софтвера |  | 3d | 2016-06-22 | 2016-06-24 | 22 | 0d | Шипка Татјана; Софтвер [0.1%] | 24h | 11,080 |
| 24 | 4.6 | Инсталација и конфигурисање опреме |  | 5d | 2016-06-27 | 2016-07-01 | 23 | 0d | Фабијан Роберт; Ференц Енике [50%] | 60h | 3,400 |
| 25 | 4.7 | Инсталација и конфигурисање софтвера |  | 5d | 2016-07-04 | 2016-07-08 | 24 | 0d | Фабијан Роберт; Ференц Енике [50%] | 60h | 3,400 |
| 26 | 4.8 | Завршена набавка хардвера и софтвера | milestone | 0d | 2016-07-08 | 2016-07-08 | 25 | 0d |  |  |  |
